# Schedules

How a schedule from MS Project changed from version to version. A marks actual dates.

## Version 1 (saved 2015-09-20)

Note of the change: [Update] GIT

| ID | WBS | Task | Duration | Start | Finish | Predecessors | Total float | Constraint |
| --- | --- | --- | --- | --- | --- | --- | --- | --- |
| 1 | 1 | **Super Shipper System** | 89d | 2015-09-07 | 2015-12-21 |  | 0d |  |
| 2 | 1.1 | **Initiation** | 25d | 2015-09-07 | 2015-10-04 |  | 64d |  |
| 3 |  | Form up team roles | 1d | 2015-09-07 | 2015-09-07 |  | 88d | finish no earlier than 2015-09-07 |
| 4 |  | Uniform idea meeting | 1d | 2015-09-07 | 2015-09-07 |  | 88d | start no earlier than 2015-09-07 |
| 5 | 1.1.3 | **Project Clarification** | 2d | 2015-09-08 | 2015-09-09 |  | 86d |  |
| 6 |  | Clarify project scope | 0.5d | 2015-09-08 | 2015-09-08 |  | 87.5d | start no earlier than 2015-09-08 |
| 7 |  | Clarify techinical requirements | 0.5d | 2015-09-08 | 2015-09-08 |  | 87.5d | start no earlier than 2015-09-08 |
| 8 |  | Clarify rules in Team | 0.5d | 2015-09-08 | 2015-09-08 |  | 87.5d | start no earlier than 2015-09-08 |
| 9 |  | Clarify working enviroments | 0.5d | 2015-09-08 | 2015-09-08 |  | 87.5d | start no earlier than 2015-09-08 |
| 10 |  | Survey practise | 2d | 2015-09-08 | 2015-09-09 |  | 86d | start no earlier than 2015-09-08 |
| 11 | 1.1.4 | **Meeting with supervisor** | 0.5d | 2015-09-09 | 2015-09-09 |  | 86.5d |  |
| 12 |  | Review project's idea | 0.5d | 2015-09-09 | 2015-09-09 |  | 86.5d | start no earlier than 2015-09-09 |
| 13 |  | Appprove Project's idea | 0d | 2015-09-09 | 2015-09-09 |  | 87d | start no earlier than 2015-09-09 |
| 14 |  | Discuss on technique to be used | 0.5d | 2015-09-09 | 2015-09-09 |  | 86.5d | start no earlier than 2015-09-09 |
| 15 |  | Uniform meeting schedule & project's deliverables | 0.5d | 2015-09-09 | 2015-09-09 |  | 86.5d | start no earlier than 2015-09-09 |
| 16 |  | Clarify the tasks on each report | 0.5d | 2015-09-09 | 2015-09-09 |  | 86.5d | start no earlier than 2015-09-09 |
| 17 | 1.1.5 | **Project Introduction** | 4d | 2015-09-10 | 2015-09-13 |  | 82d |  |
| 18 |  | Survery practise | 1d | 2015-09-10 | 2015-09-10 |  | 85d | start no earlier than 2015-09-10 |
| 19 |  | Research Background | 1d | 2015-09-11 | 2015-09-11 |  | 84d | start no earlier than 2015-09-11 |
| 20 |  | Research Competitor | 1d | 2015-09-11 | 2015-09-11 |  | 84d | start no earlier than 2015-09-11 |
| 21 |  | Research Proposal | 1d | 2015-09-11 | 2015-09-11 |  | 82d | start no earlier than 2015-09-11 |
| 22 |  | Create project introduction document | 2d | 2015-09-12 | 2015-09-13 | 21 | 82d | start no earlier than 2015-09-12 |
| 23 |  | Complete introduction document | 0d | 2015-09-13 | 2015-09-13 | 24 | 83d |  |
| 24 |  | Submit introduction document to supervisor | 0d | 2015-09-13 | 2015-09-13 |  | 83d | start no earlier than 2015-09-13 |
| 25 | 1.1.6 | **Planning** | 6d | 2015-09-14 | 2015-09-20 |  | 76d |  |
| 26 |  | Research and make choice process model | 2d | 2015-09-14 | 2015-09-15 |  | 76d | start no earlier than 2015-09-14 |
| 27 |  | Create work schedule | 1d | 2015-09-16 | 2015-09-16 | 26 | 76d |  |
| 28 |  | Create project manage Plan document | 2d | 2015-09-17 | 2015-09-18 | 27 | 76d |  |
| 29 |  | Review and update project manage plan document | 1d | 2015-09-19 | 2015-09-19 | 28 | 76d |  |
| 30 |  | Complete PMP document ver1.0 | 0d | 2015-09-20 | 2015-09-20 | 31 | 76d |  |
| 31 |  | Submit PMP document to supervisor | 0d | 2015-09-20 | 2015-09-20 |  | 76d | start no earlier than 2015-09-20 |
| 32 | 1.1.7 | **Requirement** | 18d | 2015-09-14 | 2015-10-04 |  | 64d |  |
| 33 |  | Define functions of system | 1d | 2015-09-14 | 2015-09-14 |  | 64d | start no earlier than 2015-09-14 |
| 34 | 1.1.7.2 | **Create user cases** | 6d | 2015-09-15 | 2015-09-20 | 33 | 64d |  |
| 35 |  | User Cases: Shipper | 6d | 2015-09-15 | 2015-09-20 |  | 64d |  |
| 36 |  | User Cases: Store | 6d | 2015-09-15 | 2015-09-20 |  | 64d |  |
| 37 |  | User Cases: Admin | 6d | 2015-09-15 | 2015-09-20 |  | 64d | start no earlier than 2015-09-15 |
| 38 |  | Design Mockup screens | 6d | 2015-09-15 | 2015-09-20 |  | 75d | finish no earlier than 2015-09-20 |
| 39 |  | Create Software Requirement Specification Document | 11d | 2015-09-21 | 2015-10-04 | 34 | 64d | finish no earlier than 2015-10-03 |
| 40 |  | Complete SRS document | 0d | 2015-10-04 | 2015-10-04 |  | 65d | start no earlier than 2015-10-04 |
| 41 |  | Submit SRS document to supervisor | 0d | 2015-10-04 | 2015-10-04 | 39 | 64d | start no earlier than 2015-10-04 |
| 42 | 1.2 | **Increment 1** | 29d | 2015-10-05 | 2015-11-09 |  | 35d |  |
| 43 | 1.2.1 | **Project Plan** | 1d | 2015-10-05 | 2015-10-05 |  | 63d |  |
| 44 |  | Review and update Project Manage Plan | 1d | 2015-10-05 | 2015-10-05 |  | 63d | start no earlier than 2015-10-05 |
| 45 | 1.2.2 | **System Architecture Design** | 6d | 2015-10-05 | 2015-10-11 |  | 58d |  |
| 46 |  | Define the system structure and unify system features | 1d | 2015-10-05 | 2015-10-05 |  | 58d | start no earlier than 2015-10-05 |
| 47 |  | Research and make choice of System Architecture | 1d | 2015-10-06 | 2015-10-06 | 46 | 58d |  |
| 48 |  | Create System Architecture Design Document | 4d | 2015-10-07 | 2015-10-11 | 47 | 58d | finish no earlier than 2015-10-11 |
| 49 |  | Complete SAD ver1.0 | 0d | 2015-10-11 | 2015-10-11 |  | 59d | start no earlier than 2015-10-11 |
| 50 | 1.2.3 | **Implementation** | 22d | 2015-10-12 | 2015-11-08 |  | 36d |  |
| 51 | 1.2.3.1 | **Training** | 2d | 2015-10-12 | 2015-10-13 |  | 36d |  |
| 52 |  | Study Node.js | 2d | 2015-10-12 | 2015-10-13 |  | 36d | start no earlier than 2015-10-12 |
| 53 |  | Study Angular.js | 2d | 2015-10-12 | 2015-10-13 |  | 36d | start no earlier than 2015-10-12 |
| 54 |  | Study Mobile Ionic | 2d | 2015-10-12 | 2015-10-13 |  | 36d | start no earlier than 2015-10-12 |
| 55 |  | Study test process & test related term | 2d | 2015-10-12 | 2015-10-13 |  | 36d | start no earlier than 2015-10-12 |
| 56 |  | Study material design | 2d | 2015-10-12 | 2015-10-13 |  | 36d | start no earlier than 2015-10-12 |
| 57 | 1.2.3.2 | **Design UI** | 20d | 2015-10-14 | 2015-11-08 | 51 | 36d |  |
| 58 |  | Mobile UI | 20d | 2015-10-14 | 2015-11-08 |  | 36d | start no earlier than 2015-10-14 |
| 59 |  | Web UI | 20d | 2015-10-14 | 2015-11-08 |  | 36d | start no earlier than 2015-10-14 |
| 60 |  | Complete UI design ver1.0 | 0d | 2015-11-08 | 2015-11-08 |  | 37d | start no earlier than 2015-11-08 |
| 61 | 1.2.3.3 | **Coding** | 20d | 2015-10-14 | 2015-11-08 |  | 36d |  |
| 62 |  | Coding Skeleton System | 5d | 2015-10-14 | 2015-10-20 |  | 51d | start no earlier than 2015-10-14 |
| 63 | 1.2.3.3.2 | **Coding modules** | 14d | 2015-10-22 | 2015-11-08 |  | 36d |  |
| 64 |  | Part1: NodeJS server | 14d | 2015-10-22 | 2015-11-08 |  | 36d | finish no earlier than 2015-11-08 |
| 65 |  | Part2: Client-webapp Admin | 11d | 2015-10-27 | 2015-11-08 |  | 36d | finish no earlier than 2015-11-08 |
| 66 |  | Part4: Client-mobileapp Shipper | 11d | 2015-10-27 | 2015-11-08 |  | 36d | start no earlier than 2015-10-27 |
| 67 |  | Complete source code ver1.0 | 0d | 2015-11-08 | 2015-11-08 |  | 37d | start no earlier than 2015-11-08 |
| 68 | 1.2.4 | **Testing** | 7d | 2015-11-02 | 2015-11-08 |  | 36d |  |
| 69 |  | Create test plan | 5d | 2015-11-02 | 2015-11-06 |  | 36d | start no earlier than 2015-11-02 |
| 70 |  | Review test plan | 2d | 2015-11-07 | 2015-11-08 | 69 | 36d | finish no earlier than 2015-11-08 |

| ID | WBS | Task | Duration | Start | Finish | Predecessors | Total float | Constraint |
| --- | --- | --- | --- | --- | --- | --- | --- | --- |
| 71 |  | Complete Test Plan Document ver1.0 | 0d | 2015-11-08 | 2015-11-08 |  | 37d | start no earlier than 2015-11-08 |
| 72 |  | Submit Software Architecture Document to Supervisor | 0d | 2015-11-08 | 2015-11-08 |  | 37d | start no earlier than 2015-11-08 |
| 73 | 1.2.6 | **Evaluation** | 1d | 2015-11-09 | 2015-11-09 |  | 35d |  |
| 74 |  | Evaluate Current Server | 1d | 2015-11-09 | 2015-11-09 |  | 35d | start no earlier than 2015-11-09 |
| 75 |  | Set goals for next incement | 1d | 2015-11-09 | 2015-11-09 |  | 35d | start no earlier than 2015-11-09 |
| 76 | 1.3 | **Increment 2** | 12d | 2015-11-09 | 2015-11-23 |  | 24d |  |
| 77 | 1.3.1 | **Project Plan** | 1d | 2015-11-09 | 2015-11-09 |  | 35d |  |
| 78 |  | Review and update Project Manage Plan | 1d | 2015-11-09 | 2015-11-09 |  | 35d | start no earlier than 2015-11-09 |
| 79 |  | Complete PMP document ver2.0 | 0d | 2015-11-09 | 2015-11-09 |  | 36d | start no earlier than 2015-11-09 |
| 80 | 1.3.2 | **System Architecture Design** | 6d | 2015-11-09 | 2015-11-16 |  | 30d |  |
| 81 |  | Review and Update System Architecture Design Document | 6d | 2015-11-09 | 2015-11-16 |  | 30d | start no earlier than 2015-11-09 |
| 82 |  | Complete SAD ver2.0 | 0d | 2015-11-16 | 2015-11-16 |  | 31d | start no earlier than 2015-11-16 |
| 83 | 1.3.3 | **Implementation** | 5d | 2015-11-17 | 2015-11-22 |  | 25d |  |
| 84 |  | Design UI | 5d | 2015-11-17 | 2015-11-22 |  | 25d | finish no earlier than 2015-11-22 |
| 85 |  | Complete UI design ver2.0 | 0d | 2015-11-22 | 2015-11-22 |  | 26d | start no earlier than 2015-11-22 |
| 86 | 1.3.3.3 | **Coding** | 5d | 2015-11-17 | 2015-11-22 |  | 25d |  |
| 87 | 1.3.3.3.1 | **Coding modules** | 5d | 2015-11-17 | 2015-11-22 |  | 25d |  |
| 88 |  | Part1: NodeJS server | 5d | 2015-11-17 | 2015-11-22 |  | 25d | start no earlier than 2015-11-17 |
| 89 |  | Part2: Client-webapp Admin | 5d | 2015-11-17 | 2015-11-22 |  | 25d | start no earlier than 2015-11-17 |
| 90 |  | Part3: Client-webapp Store | 5d | 2015-11-17 | 2015-11-22 |  | 25d | finish no earlier than 2015-11-22 |
| 91 |  | Part4: Client-mobileapp Shipper | 5d | 2015-11-17 | 2015-11-22 |  | 25d | finish no earlier than 2015-11-22 |
| 92 |  | Complete source code ver2.0 | 0d | 2015-11-22 | 2015-11-22 |  | 26d | start no earlier than 2015-11-22 |
| 93 | 1.3.4 | **Testing** | 6d | 2015-11-16 | 2015-11-22 |  | 25d |  |
| 94 |  | Review and update Test Plan | 1d | 2015-11-16 | 2015-11-16 |  | 30d | finish no earlier than 2015-11-16 |
| 95 |  | Create new and execute Unit Test Cases | 6d | 2015-11-16 | 2015-11-22 |  | 25d | finish no earlier than 2015-11-22 |
| 96 |  | Complete Test Plan Document ver2.0 | 0d | 2015-11-16 | 2015-11-16 |  | 31d | start no earlier than 2015-11-16 |
| 97 |  | Submit Souce Code & Test Document to Supervisor | 0d | 2015-11-22 | 2015-11-22 |  | 26d | start no earlier than 2015-11-22 |
| 98 | 1.3.6 | **Evaluation** | 1d | 2015-11-23 | 2015-11-23 |  | 24d |  |
| 99 |  | Evaluate Current System | 1d | 2015-11-23 | 2015-11-23 |  | 24d | start no earlier than 2015-11-23 |
| 100 |  | Set goals for next incement | 1d | 2015-11-23 | 2015-11-23 |  | 24d | start no earlier than 2015-11-23 |
| 101 | 1.4 | **Increment 3** | 8d | 2015-11-23 | 2015-12-01 |  | 17d |  |
| 102 | 1.4.1 | **Project Plan** | 1d | 2015-11-23 | 2015-11-23 |  | 24d |  |
| 103 |  | Review and update Project Manage Plan | 1d | 2015-11-23 | 2015-11-23 |  | 24d | start no earlier than 2015-11-23 |
| 104 |  | Complete PMP document ver3.0 | 0d | 2015-11-23 | 2015-11-23 |  | 25d | start no earlier than 2015-11-23 |
| 105 | 1.4.2 | **System Architecture Design** | 1d | 2015-11-23 | 2015-11-23 |  | 24d |  |
| 106 |  | Review and Update System Architecture Design Document | 1d | 2015-11-23 | 2015-11-23 |  | 24d | finish no earlier than 2015-11-23 |
| 107 |  | Complete Final SAD Document | 0d | 2015-11-23 | 2015-11-23 |  | 25d | start no earlier than 2015-11-23 |
| 108 | 1.4.3 | **Implementation** | 5d | 2015-11-24 | 2015-11-29 |  | 19d |  |
| 109 |  | Design UI | 5d | 2015-11-24 | 2015-11-29 |  | 19d | start no earlier than 2015-11-24 |
| 110 |  | Complete UI design ver Final | 0d | 2015-11-29 | 2015-11-29 |  | 20d | start no earlier than 2015-11-29 |
| 111 | Complete UI design ver1.0 | **Coding** | 5d | 2015-11-24 | 2015-11-29 |  | 19d |  |
| 112 | 1.4.3.3.1 | **Coding modules** | 5d | 2015-11-24 | 2015-11-29 |  | 19d |  |
| 113 |  | Part1: NodeJS server | 5d | 2015-11-24 | 2015-11-29 |  | 19d | start no earlier than 2015-11-24 |
| 114 |  | Part3: Client-webapp Store | 5d | 2015-11-24 | 2015-11-29 |  | 19d | start no earlier than 2015-11-24 |
| 115 |  | Part4: Client-MobileApp Shipper | 5d | 2015-11-24 | 2015-11-29 |  | 19d | start no earlier than 2015-11-24 |
| 116 |  | Complete Final Souce Code | 0d | 2015-11-29 | 2015-11-29 |  | 20d | start no earlier than 2015-11-29 |
| 117 | 1.4.4 | **Testing** | 5d | 2015-11-24 | 2015-11-29 |  | 19d |  |
| 118 |  | Review and update Test Plan | 1d | 2015-11-24 | 2015-11-24 |  | 23d | start no earlier than 2015-11-24 |
| 119 |  | Create new and execute Unit Test Cases | 5d | 2015-11-24 | 2015-11-29 |  | 19d | finish no earlier than 2015-11-29 |
| 120 |  | Complete Test Plan Document ver3.0 | 0d | 2015-11-24 | 2015-11-24 |  | 24d | start no earlier than 2015-11-24 |
| 121 |  | Submit source code final to supervisor | 0d | 2015-11-29 | 2015-11-29 |  | 20d | start no earlier than 2015-11-29 |
| 122 | 1.4.6 | **Evaluation** | 1d | 2015-12-01 | 2015-12-01 |  | 17d |  |
| 123 |  | Evaluate Current System | 1d | 2015-12-01 | 2015-12-01 |  | 17d | start no earlier than 2015-12-01 |
| 124 |  | Set goals for next incement | 1d | 2015-12-01 | 2015-12-01 |  | 17d | start no earlier than 2015-12-01 |
| 125 | 1.5 | **Increment 4** | 16d | 2015-12-01 | 2015-12-17 |  | 2d |  |
| 126 | 1.5.1 | **Planning** | 1d | 2015-12-01 | 2015-12-01 |  | 17d |  |
| 127 |  | Review and update Project Manage Plan | 1d | 2015-12-01 | 2015-12-01 |  | 17d | start no earlier than 2015-12-01 |
| 128 |  | Complete Final PMP document | 0d | 2015-12-01 | 2015-12-01 |  | 18d | start no earlier than 2015-12-01 |
| 129 | 1.5.2 | **Implementation** | 2d | 2015-12-01 | 2015-12-02 |  | 16d |  |
| 130 | 1.5.2.1 | **Complete all documents** | 2d | 2015-12-01 | 2015-12-02 |  | 16d |  |
| 131 |  | Refine entity system | 2d | 2015-12-01 | 2015-12-02 |  | 16d | start no earlier than 2015-12-01 |
| 132 |  | Create user manual | 2d | 2015-12-01 | 2015-12-02 |  | 16d | start no earlier than 2015-12-01 |
| 133 |  | Complete User Manual | 0d | 2015-12-02 | 2015-12-02 |  | 17d | start no earlier than 2015-12-02 |
| 134 | 1.5.3 | **Testing** | 2d | 2015-12-03 | 2015-12-04 |  | 14d |  |
| 135 |  | Create and execute system test System | 2d | 2015-12-03 | 2015-12-04 |  | 14d | start no earlier than 2015-12-03 |
| 136 |  | Complete final report of testing | 0d | 2015-12-04 | 2015-12-04 |  | 15d | start no earlier than 2015-12-04 |
| 137 | 1.5.4 | **Create final report** | 1d | 2015-12-05 | 2015-12-06 |  | 13d |  |
| 138 |  | Create final report | 1d | 2015-12-05 | 2015-12-05 |  | 13d | start no earlier than 2015-12-05 |
| 139 |  | Complete Final Report | 0d | 2015-12-05 | 2015-12-05 |  | 14d | start no earlier than 2015-12-05 |
| 140 |  | Get supervisor's approve on final report | 0d | 2015-12-05 | 2015-12-05 | 138 | 13d |  |

| ID | WBS | Task | Duration | Start | Finish | Total float | Constraint |
| --- | --- | --- | --- | --- | --- | --- | --- |
| 141 |  | Submit final report to FPT University | 0d | 2015-12-06 | 2015-12-06 | 13d | start no earlier than 2015-12-06 |
| 142 |  | Training Presentation | 10d | 2015-12-07 | 2015-12-17 | 2d | start no earlier than 2015-12-07 |
| 143 | 1.6 | **Closing** | 1d | 2015-12-21 | 2015-12-21 | 0d |  |
| 144 |  | Presentation | 1d | 2015-12-21 | 2015-12-21 | 0d | start no earlier than 2015-12-21 |

## Version 2 (saved 2015-09-30)

Note of the change: Update schedules

Last finish stays 2015-12-21. Complete tasks 0 → 33.

Added:

| ID | Task | Duration | Start | Finish | Predecessors | Constraint | Resources |
| --- | --- | --- | --- | --- | --- | --- | --- |
| 39 | **Create Sequence Diagram** | 3d | 2015-09-25 A | 2015-09-27 A | 38 |  |  |
| 40 | Sequence Diagram : Admin | 1d | 2015-09-25 A | 2015-09-27 A |  | finish no earlier than 2015-09-27 | HoangNK |
| 41 | Sequence Diagram : Shipper | 1d | 2015-09-25 A | 2015-09-27 A |  | finish no earlier than 2015-09-27 | HuyTDH; QuyenNV |
| 42 | Sequence Diagram : Store | 1d | 2015-09-25 A | 2015-09-27 A |  | finish no earlier than 2015-09-27 | KhanhKC; HoangLVQ |
| 44 | Update usecase, sequence, mockup: Store | 4d | 2015-09-28 | 2015-10-01 |  | finish no earlier than 2015-10-01 | KhanhKC; HoangLVQ |
| 45 | Update usecase, sequence, mockup: Admin | 4d | 2015-09-28 | 2015-10-01 |  | start no earlier than 2015-09-28 | HoangNK |
| 46 | Update usecase, sequence, mockup: Shipper | 4d | 2015-09-28 | 2015-10-01 |  | start no earlier than 2015-09-28 | HuyTDH; QuyenNV |
| 47 | Create Entity Relationship Diagram | 2d | 2015-10-02 | 2015-10-04 | 46 |  | HoangLVQ; HuyTDH |
| 48 | Create State Machine Diragram for Order | 2d | 2015-10-02 | 2015-10-04 |  | start no earlier than 2015-10-02 | KhanhKC |
| 49 | Create Activity Diagram | 2d | 2015-10-02 | 2015-10-04 |  | start no earlier than 2015-10-02 | HoangNK; NhungNTH; QuyenNV |

Changed:

| ID | Task | Start | Finish | Duration | Complete | Total float | Other |
| --- | --- | --- | --- | --- | --- | --- | --- |
| 1 | **Super Shipper System** | 2015-09-07 A |  | 89d → 106d | 0% → 17% |  |  |
| 2 | **Initiation** | 2015-09-07 A |  | 25d → 28d | 0% → 71% | 64d → 78d |  |
| 3 | Form up team roles | 2015-09-07 A | 2015-09-07 A |  | 0% → 100% | 88d → none | resources TEAM → HoangLVQ; KhanhKC; HuyTDH; NhungNTH; QuyenNV; HoangNK |
| 4 | Uniform idea meeting | 2015-09-07 A | 2015-09-07 A |  | 0% → 100% | 88d → none | resources TEAM → HoangLVQ; HoangNK; HuyTDH; KhanhKC; NhungNTH; QuyenNV |
| 5 | **Project Clarification** | 2015-09-08 A | 2015-09-09 A |  | 0% → 100% | 86d → none |  |
| 6 | Clarify project scope | 2015-09-08 A | 2015-09-08 A |  | 0% → 100% | 87.5d → none | resources TEAM → HoangLVQ; HoangNK; HuyTDH; KhanhKC; NhungNTH; QuyenNV |
| 7 | Clarify techinical requirements | 2015-09-08 A | 2015-09-08 A |  | 0% → 100% | 87.5d → none | resources TEAM → HoangLVQ; HoangNK; HuyTDH; KhanhKC; NhungNTH; QuyenNV |
| 8 | Clarify rules in Team | 2015-09-08 A | 2015-09-08 A |  | 0% → 100% | 87.5d → none | resources TEAM → HoangLVQ; HoangNK; HuyTDH; KhanhKC; NhungNTH; QuyenNV |
| 9 | Clarify working enviroments | 2015-09-08 A | 2015-09-08 A |  | 0% → 100% | 87.5d → none | resources TEAM → HoangLVQ; HoangNK; HuyTDH; KhanhKC; NhungNTH; QuyenNV |
| 10 | Survey practise | 2015-09-08 → 2015-09-09 A (+1d) | 2015-09-09 A | 2d → 1d | 0% → 100% | 86d → none | constraint start no earlier than 2015-09-08 → start no earlier than 2015-09-09; resources TEAM → HoangLVQ; HoangNK; HuyTDH; KhanhKC; NhungNTH; QuyenNV |
| 11 | **Meeting with supervisor** | 2015-09-09 A | 2015-09-09 A |  | 0% → 100% | 86.5d → none |  |
| 12 | Review project's idea | 2015-09-09 A | 2015-09-09 A |  | 0% → 100% | 86.5d → none | resources TEAM → HoangLVQ; HoangNK; HuyTDH; KhanhKC; NhungNTH; QuyenNV |
| 13 | Appprove Project's idea | 2015-09-09 A | 2015-09-09 A |  | 0% → 100% | 87d → none |  |
| 14 | Discuss on technique to be used | 2015-09-09 A | 2015-09-09 A |  | 0% → 100% | 86.5d → none | resources TEAM → HoangLVQ; HoangNK; HuyTDH; KhanhKC; NhungNTH; QuyenNV |
| 15 | Uniform meeting schedule & project's deliverables | 2015-09-09 A | 2015-09-09 A |  | 0% → 100% | 86.5d → none | resources TEAM → HoangLVQ; HoangNK; HuyTDH; KhanhKC; NhungNTH; QuyenNV |
| 16 | Clarify the tasks on each report | 2015-09-09 A | 2015-09-09 A |  | 0% → 100% | 86.5d → none | resources TEAM → HoangLVQ; HoangNK; HuyTDH; KhanhKC; NhungNTH; QuyenNV |
| 17 | **Project Introduction** | 2015-09-10 A | 2015-09-13 A |  | 0% → 100% | 82d → none |  |
| 18 | Survery practise | 2015-09-10 A | 2015-09-10 A |  | 0% → 100% | 85d → none | resources TEAM → HoangLVQ; HoangNK; HuyTDH; KhanhKC; NhungNTH; QuyenNV |
| 19 | Research Background | 2015-09-11 A | 2015-09-11 A |  | 0% → 100% | 84d → none |  |
| 20 | Research Competitor | 2015-09-11 A | 2015-09-11 A |  | 0% → 100% | 84d → none |  |
| 21 | Research Proposal | 2015-09-11 A | 2015-09-11 A |  | 0% → 100% | 82d → none |  |
| 22 | Create project introduction document | 2015-09-12 A | 2015-09-13 A |  | 0% → 100% | 82d → none |  |
| 23 | Complete introduction document | 2015-09-13 A | 2015-09-13 A |  | 0% → 100% | 83d → none | resources none → HoangLVQ |
| 24 | Submit introduction document to supervisor | 2015-09-13 A | 2015-09-13 A |  | 0% → 100% | 83d → none |  |
| 25 | **Planning** | 2015-09-14 A | 2015-09-20 A |  | 0% → 100% | 76d → none |  |
| 26 | Research and make choice process model | 2015-09-14 A | 2015-09-15 A |  | 0% → 100% | 76d → none |  |
| 27 | Create work schedule | 2015-09-16 A | 2015-09-16 A |  | 0% → 100% | 76d → none |  |
| 28 | Create project manage Plan document | 2015-09-17 A | 2015-09-18 A |  | 0% → 100% | 76d → none |  |
| 29 | Review and update project manage plan document | 2015-09-19 A | 2015-09-19 A |  | 0% → 100% | 76d → none |  |
| 30 | Complete PMP document ver1.0 | 2015-09-20 A | 2015-09-20 A |  | 0% → 100% | 76d → none | resources none → HoangLVQ |
| 31 | Submit PMP document to supervisor | 2015-09-20 A | 2015-09-20 A |  | 0% → 100% | 76d → none |  |
| 32 | **Requirement** | 2015-09-14 A |  | 18d → 21d | 0% → 59% | 64d → 78d |  |
| 33 | Define functions of system | 2015-09-14 A | 2015-09-14 A |  | 0% → 100% | 64d → none | resources TEAM → HoangLVQ; HoangNK; HuyTDH; KhanhKC; NhungNTH; QuyenNV |
| 34 | **Create user cases** | 2015-09-15 A | 2015-09-20 A |  | 0% → 100% | 64d → none |  |
| 35 | User Cases: Shipper | 2015-09-15 A | 2015-09-20 A |  | 0% → 100% | 64d → none |  |
| 36 | User Cases: Store | 2015-09-15 A | 2015-09-20 A |  | 0% → 100% | 64d → none |  |
| 37 | User Cases: Admin | 2015-09-15 A | 2015-09-20 A |  | 0% → 100% | 64d → none | resources HoangLVQ; HoangNK → HoangNK |
| 38 | Design Mockup screens | 2015-09-15 → 2015-09-21 A (+6d) | 2015-09-20 → 2015-09-24 A (+4d) | 6d → 4d | 0% → 100% | 75d → none | constraint finish no earlier than 2015-09-20 → finish no earlier than 2015-09-24; resources TEAM → HoangLVQ; HoangNK; HuyTDH; KhanhKC; NhungNTH; QuyenNV |
| 43 | **Update Software Requirement Specification Document** | 2015-09-21 → 2015-09-28 (+7d) |  | 11d → 7d |  | 64d → 77d | was named Create Software Requirement Specification Document; constraint finish no earlier than 2015-10-03 → none; resources TEAM → none |
| 50 | Complete SRS document |  |  |  |  | 65d → 79d | resources none → HoangLVQ |
| 52 | **Increment 1** |  |  | 29d → 36d |  | 35d → 42d |  |
| 54 | Review and update Project Manage Plan |  |  |  |  | 63d → 77d | resources HoangLVQ → HoangLVQ [50%] |
| 55 | **System Architecture Design** |  | 2015-10-11 → 2015-10-12 (+1d) | 6d → 8d |  | 58d → 68d |  |
| 56 | Define the system structure and unify system features |  | 2015-10-05 → 2015-10-06 (+1d) | 1d → 2d |  | 58d → 68d | resources TEAM → HoangLVQ [50%]; HoangNK; HuyTDH; KhanhKC; NhungNTH; QuyenNV |
| 57 | Research and make choice of System Architecture | 2015-10-06 → 2015-10-07 (+1d) | 2015-10-06 → 2015-10-07 (+1d) |  |  | 58d → 69d | resources TEAM → HoangLVQ; HoangNK; HuyTDH; KhanhKC; NhungNTH; QuyenNV |
| 58 | Create System Architecture Design Document | 2015-10-07 → 2015-10-08 (+1d) | 2015-10-11 → 2015-10-12 (+1d) |  |  | 58d → 69d | resources TEAM → HoangLVQ; HoangNK; HuyTDH; KhanhKC; NhungNTH; QuyenNV |
| 60 | **Implementation** |  |  | 22d → 28d |  | 36d → 43d |  |
| 67 | **Design UI** |  |  | 20d → 26d |  | 36d → 43d |  |
| 70 | Complete UI design ver1.0 |  |  |  |  | 37d → 44d | resources TEAM → HoangLVQ; HoangNK; HuyTDH; KhanhKC; NhungNTH; QuyenNV |
| 71 | **Coding** |  |  | 20d → 26d |  | 36d → 43d |  |
| 73 | **Coding modules** |  |  | 14d → 18d |  | 36d → 43d |  |
| 84 | Evaluate Current Server |  |  |  |  | 35d → 42d | resources TEAM → HoangLVQ; HoangNK; HuyTDH; KhanhKC; NhungNTH; QuyenNV |
| 85 | Set goals for next incement |  |  |  |  | 35d → 42d | resources TEAM → HoangLVQ; HoangNK; HuyTDH; KhanhKC; NhungNTH; QuyenNV |
| 86 | **Increment 2** |  |  | 12d → 15d |  | 24d → 28d |  |
| 90 | **System Architecture Design** |  |  | 6d → 8d |  | 30d → 35d |  |
| 91 | Review and Update System Architecture Design Document |  |  |  |  | 30d → 35d | resources TEAM → HoangLVQ; HoangNK; HuyTDH; KhanhKC; NhungNTH; QuyenNV |
| 93 | **Implementation** |  |  | 5d → 6d |  | 25d → 28d |  |
| 94 | Design UI |  |  |  |  | 25d → 28d | resources TEAM → HoangLVQ; HoangNK; HuyTDH; KhanhKC; NhungNTH; QuyenNV |
| 95 | Complete UI design ver2.0 |  |  |  |  | 26d → 30d | resources TEAM → HoangLVQ; HoangNK; HuyTDH; KhanhKC; NhungNTH; QuyenNV |
| 96 | **Coding** |  |  | 5d → 6d |  | 25d → 28d |  |
| 97 | **Coding modules** |  |  | 5d → 6d |  | 25d → 28d |  |
| 103 | **Testing** |  |  | 6d → 7d |  | 25d → 28d |  |
| 109 | Evaluate Current System |  |  |  |  | 24d → 28d | resources TEAM → HoangLVQ; HoangNK; HuyTDH; KhanhKC; NhungNTH; QuyenNV |
| 111 | **Increment 3** |  |  | 8d → 9d |  | 17d → 20d |  |
| 116 | Review and Update System Architecture Design Document |  |  |  |  | 24d → 28d | resources TEAM → HoangLVQ; HoangNK; HuyTDH; KhanhKC; NhungNTH; QuyenNV |
| 117 | Complete Final SAD Document |  |  |  |  | 25d → 29d | resources TEAM → HoangLVQ; HoangNK; HuyTDH; KhanhKC; NhungNTH; QuyenNV |
| 118 | **Implementation** |  |  | 5d → 6d |  | 19d → 21d |  |
| 119 | Design UI |  | 2015-11-29 → 2015-11-28 (-1d) |  |  | 19d → 23d |  |
| 121 | **Coding** |  |  | 5d → 6d |  | 19d → 21d |  |
| 122 | **Coding modules** |  |  | 5d → 6d |  | 19d → 21d |  |

| ID | Task | Start | Duration | Total float | Other |
| --- | --- | --- | --- | --- | --- |
| 127 | **Testing** |  | 5d → 6d | 19d → 22d |  |
| 129 | Create new and execute Unit Test Cases | 2015-11-24 → 2015-11-25 (+1d) |  | 19d → 22d |  |
| 133 | Evaluate Current System |  |  | 17d → 20d | resources TEAM → HoangLVQ; HoangNK; HuyTDH; KhanhKC; NhungNTH; QuyenNV |
| 135 | **Increment 4** |  | 16d → 17d | 2d → 4d |  |
| 152 | Training Presentation |  |  |  | resources TEAM → HoangLVQ; HoangNK; HuyTDH; KhanhKC; NhungNTH; QuyenNV |
| 154 | Presentation |  |  |  | resources TEAM → HoangLVQ; HoangNK; HuyTDH; KhanhKC; NhungNTH; QuyenNV |

## Version 3 (saved 2015-10-01)

Note of the change: [Upload] Guilde + Updated Source

Last finish stays 2015-12-21.

Added:

| ID | Task | Duration | Start | Finish | Predecessors | Constraint | Resources |
| --- | --- | --- | --- | --- | --- | --- | --- |
| 47 | Update Non-functional | 0.5d | 2015-09-28 | 2015-09-28 |  | start no earlier than 2015-09-28 | KhanhKC |
| 48 | Update Project Introdcution, Overall Description SRS | 1d | 2015-10-02 | 2015-10-02 | 45 |  | HoangLVQ |
| 52 | Review SRS document | 1d | 2015-10-04 | 2015-10-04 | 48 | start no earlier than 2015-10-03 | HoangLVQ |

Changed:

| ID | Task | Complete | Other |
| --- | --- | --- | --- |
| 2 | **Initiation** | 71% → 69% |  |
| 32 | **Requirement** | 59% → 56% |  |
| 49 | Create Entity Relationship Diagram |  | resources HoangLVQ; HuyTDH → HuyTDH |
