# Schedules

How a schedule from MS Project changed from version to version. A marks actual dates.

## Version 1 (saved 2015-09-20)

Note of the change: [Upload][Project Plan]: Schedule.mpp + milestone

| ID | WBS | Task | Duration | Start | Finish | Predecessors | Total float | Constraint |
| --- | --- | --- | --- | --- | --- | --- | --- | --- |
| 1 | 1 | **Super Shipper System** | 89d | 2015-09-07 | 2015-12-21 |  | 0d |  |
| 2 | 1.1 | **Initiation** | 25d | 2015-09-07 | 2015-10-04 |  | 64d |  |
| 3 |  | Form up team roles | 1d | 2015-09-07 | 2015-09-07 |  | 88d | finish no earlier than 2015-09-07 |
| 4 |  | Uniform idea meeting | 1d | 2015-09-07 | 2015-09-07 |  | 88d | start no earlier than 2015-09-07 |
| 5 | 1.1.3 | **Project Clarification** | 2d | 2015-09-08 | 2015-09-09 |  | 86d |  |
| 6 |  | Clarify project scope | 0.5d | 2015-09-08 | 2015-09-08 |  | 87.5d | start no earlier than 2015-09-08 |
| 7 |  | Clarify techinical requirements | 0.5d | 2015-09-08 | 2015-09-08 |  | 87.5d | start no earlier than 2015-09-08 |
| 8 |  | Clarify rules in Team | 0.5d | 2015-09-08 | 2015-09-08 |  | 87.5d | start no earlier than 2015-09-08 |
| 9 |  | Clarify working enviroments | 0.5d | 2015-09-08 | 2015-09-08 |  | 87.5d | start no earlier than 2015-09-08 |
| 10 |  | Survey practise | 2d | 2015-09-08 | 2015-09-09 |  | 86d | start no earlier than 2015-09-08 |
| 11 | 1.1.4 | **Meeting with supervisor** | 0.5d | 2015-09-09 | 2015-09-09 |  | 86.5d |  |
| 12 |  | Review project's idea | 0.5d | 2015-09-09 | 2015-09-09 |  | 86.5d | start no earlier than 2015-09-09 |
| 13 |  | Appprove Project's idea | 0d | 2015-09-09 | 2015-09-09 |  | 87d | start no earlier than 2015-09-09 |
| 14 |  | Discuss on technique to be used | 0.5d | 2015-09-09 | 2015-09-09 |  | 86.5d | start no earlier than 2015-09-09 |
| 15 |  | Uniform meeting schedule & project's deliverables | 0.5d | 2015-09-09 | 2015-09-09 |  | 86.5d | start no earlier than 2015-09-09 |
| 16 |  | Clarify the tasks on each report | 0.5d | 2015-09-09 | 2015-09-09 |  | 86.5d | start no earlier than 2015-09-09 |
| 17 | 1.1.5 | **Project Introduction** | 4d | 2015-09-10 | 2015-09-13 |  | 82d |  |
| 18 |  | Survery practise | 1d | 2015-09-10 | 2015-09-10 |  | 85d | start no earlier than 2015-09-10 |
| 19 |  | Research Background | 1d | 2015-09-11 | 2015-09-11 |  | 84d | start no earlier than 2015-09-11 |
| 20 |  | Research Competitor | 1d | 2015-09-11 | 2015-09-11 |  | 84d | start no earlier than 2015-09-11 |
| 21 |  | Research Proposal | 1d | 2015-09-11 | 2015-09-11 |  | 82d | start no earlier than 2015-09-11 |
| 22 |  | Create project introduction document | 2d | 2015-09-12 | 2015-09-13 | 21 | 82d | start no earlier than 2015-09-12 |
| 23 |  | Complete introduction document | 0d | 2015-09-13 | 2015-09-13 | 24 | 83d |  |
| 24 |  | Submit introduction document to supervisor | 0d | 2015-09-13 | 2015-09-13 |  | 83d | start no earlier than 2015-09-13 |
| 25 | 1.1.6 | **Planning** | 6d | 2015-09-14 | 2015-09-20 |  | 76d |  |
| 26 |  | Research and make choice process model | 2d | 2015-09-14 | 2015-09-15 |  | 76d | start no earlier than 2015-09-14 |
| 27 |  | Create work schedule | 1d | 2015-09-16 | 2015-09-16 | 26 | 76d |  |
| 28 |  | Create project manage Plan document | 2d | 2015-09-17 | 2015-09-18 | 27 | 76d |  |
| 29 |  | Review and update project manage plan document | 1d | 2015-09-19 | 2015-09-19 | 28 | 76d |  |
| 30 |  | Complete PMP document ver1.0 | 0d | 2015-09-20 | 2015-09-20 | 31 | 76d |  |
| 31 |  | Submit PMP document to supervisor | 0d | 2015-09-20 | 2015-09-20 |  | 76d | start no earlier than 2015-09-20 |
| 32 | 1.1.7 | **Requirement** | 18d | 2015-09-14 | 2015-10-04 |  | 64d |  |
| 33 |  | Define functions of system | 1d | 2015-09-14 | 2015-09-14 |  | 64d | start no earlier than 2015-09-14 |
| 34 | 1.1.7.2 | **Create user cases** | 6d | 2015-09-15 | 2015-09-20 | 33 | 64d |  |
| 35 |  | User Cases: Shipper | 6d | 2015-09-15 | 2015-09-20 |  | 64d |  |
| 36 |  | User Cases: Store | 6d | 2015-09-15 | 2015-09-20 |  | 64d |  |
| 37 |  | User Cases: Admin | 6d | 2015-09-15 | 2015-09-20 |  | 64d | start no earlier than 2015-09-15 |
| 38 |  | Design Mockup screens | 6d | 2015-09-15 | 2015-09-20 |  | 75d | finish no earlier than 2015-09-20 |
| 39 |  | Create Software Requirement Specification Document | 11d | 2015-09-21 | 2015-10-04 | 34 | 64d | finish no earlier than 2015-10-03 |
| 40 |  | Complete SRS document | 0d | 2015-10-04 | 2015-10-04 |  | 65d | start no earlier than 2015-10-04 |
| 41 |  | Submit SRS document to supervisor | 0d | 2015-10-04 | 2015-10-04 | 39 | 64d | start no earlier than 2015-10-04 |
| 42 | 1.2 | **Increment 1** | 29d | 2015-10-05 | 2015-11-09 |  | 35d |  |
| 43 | 1.2.1 | **Project Plan** | 1d | 2015-10-05 | 2015-10-05 |  | 63d |  |
| 44 |  | Review and update Project Manage Plan | 1d | 2015-10-05 | 2015-10-05 |  | 63d | start no earlier than 2015-10-05 |
| 45 | 1.2.2 | **System Architecture Design** | 6d | 2015-10-05 | 2015-10-11 |  | 58d |  |
| 46 |  | Define the system structure and unify system features | 1d | 2015-10-05 | 2015-10-05 |  | 58d | start no earlier than 2015-10-05 |
| 47 |  | Research and make choice of System Architecture | 1d | 2015-10-06 | 2015-10-06 | 46 | 58d |  |
| 48 |  | Create System Architecture Design Document | 4d | 2015-10-07 | 2015-10-11 | 47 | 58d | finish no earlier than 2015-10-11 |
| 49 |  | Complete SAD ver1.0 | 0d | 2015-10-11 | 2015-10-11 |  | 59d | start no earlier than 2015-10-11 |
| 50 | 1.2.3 | **Implementation** | 22d | 2015-10-12 | 2015-11-08 |  | 36d |  |
| 51 | 1.2.3.1 | **Training** | 2d | 2015-10-12 | 2015-10-13 |  | 36d |  |
| 52 |  | Study Node.js | 2d | 2015-10-12 | 2015-10-13 |  | 36d | start no earlier than 2015-10-12 |
| 53 |  | Study Angular.js | 2d | 2015-10-12 | 2015-10-13 |  | 36d | start no earlier than 2015-10-12 |
| 54 |  | Study Mobile Ionic | 2d | 2015-10-12 | 2015-10-13 |  | 36d | start no earlier than 2015-10-12 |
| 55 |  | Study test process & test related term | 2d | 2015-10-12 | 2015-10-13 |  | 36d | start no earlier than 2015-10-12 |
| 56 |  | Study material design | 2d | 2015-10-12 | 2015-10-13 |  | 36d | start no earlier than 2015-10-12 |
| 57 | 1.2.3.2 | **Design UI** | 20d | 2015-10-14 | 2015-11-08 | 51 | 36d |  |
| 58 |  | Mobile UI | 20d | 2015-10-14 | 2015-11-08 |  | 36d | start no earlier than 2015-10-14 |
| 59 |  | Web UI | 20d | 2015-10-14 | 2015-11-08 |  | 36d | start no earlier than 2015-10-14 |
| 60 | 1.2.3.3 | **Coding** | 20d | 2015-10-14 | 2015-11-08 |  | 36d |  |
| 61 |  | Coding Skeleton System | 5d | 2015-10-14 | 2015-10-20 |  | 51d | start no earlier than 2015-10-14 |
| 62 | 1.2.3.3.2 | **Coding modules** | 14d | 2015-10-22 | 2015-11-08 |  | 36d |  |
| 63 |  | Part1: NodeJS server | 14d | 2015-10-22 | 2015-11-08 |  | 36d | finish no earlier than 2015-11-08 |
| 64 |  | Part2: Client-webapp Admin | 11d | 2015-10-27 | 2015-11-08 |  | 36d | finish no earlier than 2015-11-08 |
| 65 |  | Part4: Client-mobileapp Shipper | 11d | 2015-10-27 | 2015-11-08 |  | 36d | start no earlier than 2015-10-27 |
| 66 |  | Complete source code ver1.0 | 0d | 2015-11-08 | 2015-11-08 |  | 37d | start no earlier than 2015-11-08 |
| 67 | 1.2.4 | **Testing** | 7d | 2015-11-02 | 2015-11-08 |  | 36d |  |
| 68 |  | Create test plan | 5d | 2015-11-02 | 2015-11-06 |  | 36d | start no earlier than 2015-11-02 |
| 69 |  | Review test plan | 2d | 2015-11-07 | 2015-11-08 | 68 | 36d | finish no earlier than 2015-11-08 |
| 70 |  | Complete Test Plan Document ver1.0 | 0d | 2015-11-08 | 2015-11-08 |  | 37d | start no earlier than 2015-11-08 |

| ID | WBS | Task | Duration | Start | Finish | Predecessors | Total float | Constraint |
| --- | --- | --- | --- | --- | --- | --- | --- | --- |
| 71 |  | Submit Software Architecture Document to Supervisor | 0d | 2015-11-08 | 2015-11-08 |  | 37d | start no earlier than 2015-11-08 |
| 72 | 1.2.6 | **Evaluation** | 1d | 2015-11-09 | 2015-11-09 |  | 35d |  |
| 73 |  | Evaluate Current Server | 1d | 2015-11-09 | 2015-11-09 |  | 35d | start no earlier than 2015-11-09 |
| 74 |  | Set goals for next incement | 1d | 2015-11-09 | 2015-11-09 |  | 35d | start no earlier than 2015-11-09 |
| 75 | 1.3 | **Increment 2** | 12d | 2015-11-09 | 2015-11-23 |  | 24d |  |
| 76 | 1.3.1 | **Project Plan** | 1d | 2015-11-09 | 2015-11-09 |  | 35d |  |
| 77 |  | Review and update Project Manage Plan | 1d | 2015-11-09 | 2015-11-09 |  | 35d | start no earlier than 2015-11-09 |
| 78 |  | Complete PMP document ver2.0 | 0d | 2015-11-09 | 2015-11-09 |  | 36d | start no earlier than 2015-11-09 |
| 79 | 1.3.2 | **System Architecture Design** | 6d | 2015-11-09 | 2015-11-16 |  | 30d |  |
| 80 |  | Review and Update System Architecture Design Document | 6d | 2015-11-09 | 2015-11-16 |  | 30d | start no earlier than 2015-11-09 |
| 81 |  | Complete SAD ver2.0 | 0d | 2015-11-16 | 2015-11-16 |  | 31d | start no earlier than 2015-11-16 |
| 82 | 1.3.3 | **Implementation** | 5d | 2015-11-17 | 2015-11-22 |  | 25d |  |
| 83 |  | Design UI | 5d | 2015-11-17 | 2015-11-22 |  | 25d | finish no earlier than 2015-11-22 |
| 84 | 1.3.3.2 | **Coding** | 5d | 2015-11-17 | 2015-11-22 |  | 25d |  |
| 85 | 1.3.3.2.1 | **Coding modules** | 5d | 2015-11-17 | 2015-11-22 |  | 25d |  |
| 86 |  | Part1: NodeJS server | 5d | 2015-11-17 | 2015-11-22 |  | 25d | start no earlier than 2015-11-17 |
| 87 |  | Part2: Client-webapp Admin | 5d | 2015-11-17 | 2015-11-22 |  | 25d | start no earlier than 2015-11-17 |
| 88 |  | Part3: Client-webapp Store | 5d | 2015-11-17 | 2015-11-22 |  | 25d | finish no earlier than 2015-11-22 |
| 89 |  | Part4: Client-mobileapp Shipper | 5d | 2015-11-17 | 2015-11-22 |  | 25d | finish no earlier than 2015-11-22 |
| 90 |  | Complete source code ver2.0 | 0d | 2015-11-22 | 2015-11-22 |  | 26d | start no earlier than 2015-11-22 |
| 91 | 1.3.4 | **Testing** | 6d | 2015-11-16 | 2015-11-22 |  | 25d |  |
| 92 |  | Review and update Test Plan | 1d | 2015-11-16 | 2015-11-16 |  | 30d | finish no earlier than 2015-11-16 |
| 93 |  | Create new and execute Unit Test Cases | 6d | 2015-11-16 | 2015-11-22 |  | 25d | finish no earlier than 2015-11-22 |
| 94 |  | Complete Test Plan Document ver2.0 | 0d | 2015-11-16 | 2015-11-16 |  | 31d | start no earlier than 2015-11-16 |
| 95 |  | Submit Souce Code & Test Document to Supervisor | 0d | 2015-11-22 | 2015-11-22 |  | 26d | start no earlier than 2015-11-22 |
| 96 | 1.3.6 | **Evaluation** | 1d | 2015-11-23 | 2015-11-23 |  | 24d |  |
| 97 |  | Evaluate Current System | 1d | 2015-11-23 | 2015-11-23 |  | 24d | start no earlier than 2015-11-23 |
| 98 |  | Set goals for next incement | 1d | 2015-11-23 | 2015-11-23 |  | 24d | start no earlier than 2015-11-23 |
| 99 | 1.4 | **Increment 3** | 8d | 2015-11-23 | 2015-12-01 |  | 17d |  |
| 100 | 1.4.1 | **Project Plan** | 1d | 2015-11-23 | 2015-11-23 |  | 24d |  |
| 101 |  | Review and update Project Manage Plan | 1d | 2015-11-23 | 2015-11-23 |  | 24d | start no earlier than 2015-11-23 |
| 102 |  | Complete PMP document ver3.0 | 0d | 2015-11-23 | 2015-11-23 |  | 25d | start no earlier than 2015-11-23 |
| 103 | 1.4.2 | **System Architecture Design** | 1d | 2015-11-23 | 2015-11-23 |  | 24d |  |
| 104 |  | Review and Update System Architecture Design Document | 1d | 2015-11-23 | 2015-11-23 |  | 24d | finish no earlier than 2015-11-23 |
| 105 |  | Complete Final SAD Document | 0d | 2015-11-23 | 2015-11-23 |  | 25d | start no earlier than 2015-11-23 |
| 106 | 1.4.3 | **Implementation** | 5d | 2015-11-24 | 2015-11-29 |  | 19d |  |
| 107 |  | Design UI | 5d | 2015-11-24 | 2015-11-29 |  | 19d | start no earlier than 2015-11-24 |
| 108 | 1.4.3.2 | **Coding** | 5d | 2015-11-24 | 2015-11-29 |  | 19d |  |
| 109 | 1.4.3.2.1 | **Coding modules** | 5d | 2015-11-24 | 2015-11-29 |  | 19d |  |
| 110 |  | Part1: NodeJS server | 5d | 2015-11-24 | 2015-11-29 |  | 19d | start no earlier than 2015-11-24 |
| 111 |  | Part3: Client-webapp Store | 5d | 2015-11-24 | 2015-11-29 |  | 19d | start no earlier than 2015-11-24 |
| 112 |  | Part4: Client-MobileApp Shipper | 5d | 2015-11-24 | 2015-11-29 |  | 19d | start no earlier than 2015-11-24 |
| 113 |  | Complete Final Souce Code | 0d | 2015-11-29 | 2015-11-29 |  | 20d | start no earlier than 2015-11-29 |
| 114 | 1.4.4 | **Testing** | 5d | 2015-11-24 | 2015-11-29 |  | 19d |  |
| 115 |  | Review and update Test Plan | 1d | 2015-11-24 | 2015-11-24 |  | 23d | start no earlier than 2015-11-24 |
| 116 |  | Create new and execute Unit Test Cases | 5d | 2015-11-24 | 2015-11-29 |  | 19d | finish no earlier than 2015-11-29 |
| 117 |  | Complete Test Plan Document ver3.0 | 0d | 2015-11-24 | 2015-11-24 |  | 24d | start no earlier than 2015-11-24 |
| 118 |  | Submit source code final to supervisor | 0d | 2015-11-29 | 2015-11-29 |  | 20d | start no earlier than 2015-11-29 |
| 119 | 1.4.6 | **Evaluation** | 1d | 2015-12-01 | 2015-12-01 |  | 17d |  |
| 120 |  | Evaluate Current System | 1d | 2015-12-01 | 2015-12-01 |  | 17d | start no earlier than 2015-12-01 |
| 121 |  | Set goals for next incement | 1d | 2015-12-01 | 2015-12-01 |  | 17d | start no earlier than 2015-12-01 |
| 122 | 1.5 | **Increment 4** | 16d | 2015-12-01 | 2015-12-17 |  | 2d |  |
| 123 | 1.5.1 | **Planning** | 1d | 2015-12-01 | 2015-12-01 |  | 17d |  |
| 124 |  | Review and update Project Manage Plan | 1d | 2015-12-01 | 2015-12-01 |  | 17d | start no earlier than 2015-12-01 |
| 125 |  | Complete Final PMP document | 0d | 2015-12-01 | 2015-12-01 |  | 18d | start no earlier than 2015-12-01 |
| 126 | 1.5.2 | **Implementation** | 2d | 2015-12-01 | 2015-12-02 |  | 16d |  |
| 127 | 1.5.2.1 | **Complete all documents** | 2d | 2015-12-01 | 2015-12-02 |  | 16d |  |
| 128 |  | Refine entity system | 2d | 2015-12-01 | 2015-12-02 |  | 16d | start no earlier than 2015-12-01 |
| 129 |  | Create user manual | 2d | 2015-12-01 | 2015-12-02 |  | 16d | start no earlier than 2015-12-01 |
| 130 |  | Complete User Manual | 0d | 2015-12-02 | 2015-12-02 |  | 17d | start no earlier than 2015-12-02 |
| 131 | 1.5.3 | **Testing** | 2d | 2015-12-03 | 2015-12-04 |  | 14d |  |
| 132 |  | Create and execute system test System | 2d | 2015-12-03 | 2015-12-04 |  | 14d | start no earlier than 2015-12-03 |
| 133 |  | Complete final report of testing | 0d | 2015-12-04 | 2015-12-04 |  | 15d | start no earlier than 2015-12-04 |
| 134 | 1.5.4 | **Create final report** | 1d | 2015-12-05 | 2015-12-06 |  | 13d |  |
| 135 |  | Create final report | 1d | 2015-12-05 | 2015-12-05 |  | 13d | start no earlier than 2015-12-05 |
| 136 |  | Complete Final Report | 0d | 2015-12-05 | 2015-12-05 |  | 14d | start no earlier than 2015-12-05 |
| 137 |  | Get supervisor's approve on final report | 0d | 2015-12-05 | 2015-12-05 | 135 | 13d |  |
| 138 |  | Submit final report to FPT University | 0d | 2015-12-06 | 2015-12-06 |  | 13d | start no earlier than 2015-12-06 |
| 139 |  | Training Presentation | 10d | 2015-12-07 | 2015-12-17 |  | 2d | start no earlier than 2015-12-07 |
| 140 | 1.6 | **Closing** | 1d | 2015-12-21 | 2015-12-21 |  | 0d |  |

| ID | Task | Duration | Start | Finish | Total float | Constraint |
| --- | --- | --- | --- | --- | --- | --- |
| 141 | Presentation | 1d | 2015-12-21 | 2015-12-21 | 0d | start no earlier than 2015-12-21 |

## Version 2 (saved 2015-09-20)

Note of the change: [Upload][Project Plan]: Fix Quality Management QuyenNV

Last finish stays 2015-12-21.

Added:

| ID | Task | Duration | Start | Finish | Constraint | Resources |
| --- | --- | --- | --- | --- | --- | --- |
| 60 | Complete UI design ver1.0 | 0d | 2015-11-08 | 2015-11-08 | start no earlier than 2015-11-08 | TEAM |
| 85 | Complete UI design ver2.0 | 0d | 2015-11-22 | 2015-11-22 | start no earlier than 2015-11-22 | TEAM |
| 110 | Complete UI design ver Final | 0d | 2015-11-29 | 2015-11-29 | start no earlier than 2015-11-29 |  |

Changed:

| ID | Task | Other |
| --- | --- | --- |
| 107 | Complete Final SAD Document | resources none → TEAM |
